# Sistema de Control de Mantenimiento de Equipo de Cómputo

How a schedule from GanttProject changed from version to version. A marks actual dates.

## Version 1 (saved 2014-01-20)

Note of the change: Cambio de permisos (a Escritura) de la carpeta LMEC

| ID | WBS | Task | Duration | Start | Finish | Predecessors | Complete | Constraint |
| --- | --- | --- | --- | --- | --- | --- | --- | --- |
| 1 |  | Analizar Requerimientos | 18d | 2012-06-27 | 2012-08-10 |  | 95% |  |
| 2 |  | Inducción al equipo de desarrollo | 10d | 2012-08-13 | 2012-08-24 |  | 100% |  |
| 3 | 3 | **Diseñar** | 25d | 2012-08-27 | 2012-09-28 | 1, 2 | 91% |  |
| 4 |  | Diseño de Base de Datos | 25d | 2012-08-27 | 2012-09-28 |  | 98% |  |
| 5 |  | Diseño de Interfaz | 25d | 2012-08-27 | 2012-09-28 |  | 85% |  |
| 6 | 4 | **Desarrollar** | 297d | 2012-10-01 | 2014-02-20 | 3 | 47% |  |
| 7 | 4.1 | **Módulo Acceso** | 10d | 2012-10-01 | 2012-10-15 |  | 78% |  |
| 8 |  | Autenticación con BD | 8d | 2012-10-01 | 2012-10-10 |  | 98% |  |
| 9 |  | Autenticación con LDAP | 2d | 2012-10-11 | 2012-10-15 | 8 |  | start no earlier than 2012-08-31 |
| 10 | 4.2 | **Módulo de Seguridad** | 13d | 2012-10-11 | 2012-10-30 | 8 | 76% | start no earlier than 2012-08-10 |
| 11 |  | Alta/Baja/Cambios de Usuarios | 4d | 2012-10-11 | 2012-10-17 | 8 | 70% | start no earlier than 2012-08-10 |
| 12 |  | Asignación de Roles a Usuarios | 9d | 2012-10-18 | 2012-10-30 | 11 | 80% |  |
| 13 | 4.3 | **Módulo de Catálogos** | 120d | 2012-10-31 | 2013-06-04 | 8 | 99% |  |
| 14 |  | Proveedores | 10d | 2012-10-31 | 2012-11-15 | 1, 10 | 100% |  |
| 15 |  | Dependencias | 10d | 2012-11-16 | 2012-11-30 | 14 | 100% |  |
| 16 |  | Clientes | 10d | 2012-12-03 | 2012-12-14 | 15 | 100% | start no earlier than 2012-07-23 |
| 17 |  | Contactos | 10d | 2012-12-17 | 2013-01-16 | 16 | 100% |  |
| 18 |  | Servicios | 10d | 2013-01-17 | 2013-01-30 | 1, 10, 17 | 100% | start no earlier than 2012-07-25 |
| 19 |  | Equipos | 10d | 2013-01-31 | 2013-02-18 | 18 | 100% |  |
| 20 |  | Modelos | 10d | 2013-02-19 | 2013-03-05 | 19 | 100% |  |
| 21 |  | Marcas | 10d | 2013-03-06 | 2013-03-20 | 20 | 100% |  |
| 22 |  | Refacciones | 10d | 2013-03-21 | 2013-04-17 | 1, 10, 21 | 100% |  |
| 23 |  | Trabajos | 10d | 2013-04-18 | 2013-05-03 | 22 | 100% |  |
| 24 |  | Accesorios | 10d | 2013-05-06 | 2013-05-21 | 23 | 100% |  |
| 25 |  | Cotizaciones | 10d | 2013-05-22 | 2013-06-04 | 24 | 90% |  |
| 26 | 4.4 | **Módulo de Entrada de Equipo** | 50d | 2013-06-05 | 2013-09-03 | 10, 13 | 12% | start no earlier than 2012-07-29 |
| 27 |  | Alta/Baja/Cambios de entradas | 30d | 2013-06-05 | 2013-07-16 | 10, 13 | 20% | start no earlier than 2012-07-29 |
| 28 |  | Impresión de entradas | 20d | 2013-08-07 | 2013-09-03 | 27 |  |  |
| 29 | 4.5 | **Módulo de Salida de Equipo** | 35d | 2013-09-04 | 2013-10-23 | 10, 13, 26 |  |  |
| 30 |  | Alta/Baja/Cambios de salidas | 20d | 2013-09-04 | 2013-10-02 | 1, 10, 13, 26 |  |  |
| 31 |  | Impresión de Salidas | 15d | 2013-10-03 | 2013-10-23 | 1, 10, 13, 26, 30 |  |  |
| 32 | 4.6 | **Módulo de Seguimiento** | 31d | 2013-10-24 | 2013-12-09 | 29 |  |  |
| 33 |  | Asignación de estado del equipo | 8d | 2013-10-24 | 2013-11-05 | 1, 10, 13, 26, 29 |  |  |
| 34 |  | Asignación de personal | 8d | 2013-11-06 | 2013-11-15 | 33 |  |  |
| 35 |  | Trabajos realizados al equipo | 15d | 2013-11-19 | 2013-12-09 | 34 |  |  |
| 36 | 4.7 | **Módulo de Estadísticas** | 40d | 2013-12-10 | 2014-02-20 | 32 |  |  |
| 37 |  | Número de PC, Laptop, impresora, etc, en un período de tiempo | 16d | 2013-12-10 | 2014-01-17 | 1, 3, 8, 10, 13, 26, 29, 32 |  |  |
| 38 |  | Número de PC, Laptop, impresora, etc son baja | 16d | 2013-12-10 | 2014-01-17 | 35 |  |  |
| 39 |  | Número de PC, Laptop, impresora, etc en garantía | 16d | 2013-12-10 | 2014-01-17 | 35 |  |  |
| 40 |  | Mantenimientos preventivos y correctivos diagnosticados. | 8d | 2014-01-20 | 2014-01-29 | 39 |  |  |
| 41 |  | Tiempo promedio de diagnóstico (El tiempo de diagnóstico es desde que el equipo es recepcionado hasta que se finaliza el diagnóstico) | 8d | 2014-01-30 | 2014-02-10 | 40 |  |  |
| 42 |  | Tiempo promedio de reparación (con pieza, sin pieza) | 8d | 2014-02-11 | 2014-02-20 | 41 |  |  |
| 43 |  | Validar y probar | 30d | 2014-02-21 | 2014-04-03 | 6 | 40% |  |
| 44 |  | Documentar | 30d | 2014-04-04 | 2014-05-15 | 43 |  |  |
| 45 |  | Implementar | 8d | 2014-05-16 | 2014-05-27 | 44 | 30% |  |
| 46 |  | Capacitar | 15d | 2014-05-28 | 2014-06-17 | 45 |  |  |
| 47 |  | Liberar | 8d | 2014-06-18 | 2014-06-27 | 46 |  |  |

## Version 2 (saved 2014-09-03)

Note of the change: Estado de Avance al 29 de Agosto de 2014

Last finish stays 2014-06-27. Complete tasks 12 → 14.

Changed:

| ID | Task | Complete |
| --- | --- | --- |
| 1 | Analizar Requerimientos | 95% → 96% |
| 3 | **Diseñar** | 91% → 93% |
| 4 | Diseño de Base de Datos | 98% → 99% |
| 5 | Diseño de Interfaz | 85% → 88% |
| 6 | **Desarrollar** | 47% → 51% |
| 7 | **Módulo Acceso** | 78% → 84% |
| 9 | Autenticación con LDAP | 0% → 30% |
| 10 | **Módulo de Seguridad** | 76% → 100% |
| 11 | Alta/Baja/Cambios de Usuarios | 70% → 100% |
| 12 | Asignación de Roles a Usuarios | 80% → 100% |
| 26 | **Módulo de Entrada de Equipo** | 12% → 16% |
| 28 | Impresión de entradas | 0% → 10% |
| 29 | **Módulo de Salida de Equipo** | 0% → 15% |
| 30 | Alta/Baja/Cambios de salidas | 0% → 20% |
| 31 | Impresión de Salidas | 0% → 10% |
| 32 | **Módulo de Seguimiento** | 0% → 5% |
| 33 | Asignación de estado del equipo | 0% → 5% |
| 34 | Asignación de personal | 0% → 5% |
| 35 | Trabajos realizados al equipo | 0% → 5% |
| 43 | Validar y probar | 40% → 47% |
| 44 | Documentar | 0% → 5% |
| 47 | Liberar | 0% → 10% |
